# 船舶AI系统开发计划

Schedule from MS Project, 2020-05-06 to 2020-09-30.

## Calendars

- Standard: Mon-Fri 08:00-12:00, 13:00-17:00; Sat-Sun off.

## Resources

| Resource |
| --- |
| Management |
| Project Manager |
| Analyst |
| Developer |
| Testers |
| Trainers |
| Technical Communicators |
| Deployment Team |

## Schedule

| ID | WBS | Task | Duration | Start | Finish | Predecessors | Total slack | Free slack | Constraint | Resources | Work |
| --- | --- | --- | --- | --- | --- | --- | --- | --- | --- | --- | --- |
| 1 | 1 | **需求分析** | 18d | 2020-05-06 | 2020-05-29 |  |  |  |  |  | 480h |
| 2 | 1.1 | 产品需求收集 | 6.4d | 2020-05-06 | 2020-05-14 |  | 82.2d | 2.2d | start no earlier than 2020-05-06 | Analyst; Deployment Team; Project Manager; Testers; Developer | 256h |
| 3 | 1.2 | 需求分解 | 2.4d | 2020-05-18 | 2020-05-20 | 2 | 80d | 0d | finish no earlier than 2020-05-20 | Analyst; Deployment Team; Project Manager; Testers; Developer | 96h |
| 4 | 1.3 | 需求分析反馈 | 4d | 2020-05-21 | 2020-05-26 | 3 | 80d | 0d | finish no earlier than 2020-05-26 | Project Manager | 32h |
| 5 | 1.4 | 风险评估 | 24h | 2020-05-27 | 2020-05-29 | 4 | 80d | 0d | start no earlier than 2020-05-27 | Project Manager; Deployment Team; Developer; Technical Communicators | 96h |
| 6 | 2 | **系统设计** | 15d | 2020-06-01 | 2020-06-19 |  |  |  |  |  | 352h |
| 7 | 2.1 | 系统结构设计 | 5d | 2020-06-01 | 2020-06-05 | 5 | 80d | 0d | start no earlier than 2020-06-01 | Analyst; Deployment Team; Developer; Testers | 160h |
| 8 | 2.2 | 网络通信设计 | 3d | 2020-06-08 | 2020-06-10 | 7 | 80d |  | finish no earlier than 2020-06-10 | Analyst | 24h |
| 9 | 2.3 | AI算法设计 | 15d | 2020-06-01 | 2020-06-19 |  | 73d |  | finish no earlier than 2020-06-19 | Analyst | 120h |
| 10 | 2.4 | 视频接入架构设计 | 1d | 2020-06-11 | 2020-06-11 |  | 22d | 0d | finish no earlier than 2020-06-11 | Management | 8h |
| 11 | 2.5 | 视频编/解码设计 | 1d | 2020-06-12 | 2020-06-12 | 10 | 22d | 0d |  | Management | 8h |
| 12 | 2.6 | 数据存储设计 | 16h | 2020-06-15 | 2020-06-16 | 11 | 22d | 0d | finish no earlier than 2020-06-16 | Management; Project Manager | 32h |
| 13 | 2.7 | 业务逻辑设计 | 3d | 2020-06-17 | 2020-06-19 | 12 | 22d | 0d | finish no earlier than 2020-06-19 |  |  |
| 14 | 3 | **代码编写** | 51d? | 2020-06-22 | 2020-08-31 |  |  |  |  |  | 1504h |
| 15 | 3.1 | AI算法模块 | 51d | 2020-06-22 | 2020-08-31 | 13 | 22d |  | finish no earlier than 2020-08-31 | Developer | 408h |
| 16 | 3.2 | 网络通信模块 | 5d | 2020-06-22 | 2020-06-26 |  | 45.5d | 0d | finish no earlier than 2020-06-26 | Developer | 40h |
| 17 | 3.3 | 视频接入模块 | 5d | 2020-06-29 | 2020-07-03 | 16 | 45.5d | 0d | finish no earlier than 2020-07-03 | Developer | 40h |
| 18 | 3.4 | 视频编/解码模块 | 5d | 2020-07-06 | 2020-07-10 | 17 | 45.5d | 3.75d | finish no earlier than 2020-07-10 | Developer | 40h |
| 19 | 3.5 | 报警推送模块 | 5d | 2020-07-13 | 2020-07-17 | 18FS-7.5% | 53d |  | finish no earlier than 2020-07-17 | Developer | 40h |
| 20 | 3.6 | WEB后台服务模块 | 30d? | 2020-06-22 | 2020-07-31 |  | 43d |  | finish no earlier than 2020-07-31 | Developer | 240h |
| 21 | 3.7 | 前端页面模块 | 15d? | 2020-06-22 | 2020-07-10 |  | 33d | 0d | finish no earlier than 2020-07-10 | Developer | 120h |
| 22 | 3.8 | API接口模块 | 15d? | 2020-07-13 | 2020-07-31 | 21 | 33d | 0d | finish no earlier than 2020-07-31 | Developer | 120h |
| 23 | 3.9 | Docker仓库部署 | 10d | 2020-08-03 | 2020-08-14 | 22 | 33d |  | finish no earlier than 2020-07-31 | Deployment Team; Developer; Testers | 240h |
| 24 | 3.10 | 代码BUG修改和优化 | 15d? | 2020-08-03 | 2020-08-21 |  | 22d | 0d | finish no earlier than 2020-08-21 | Developer | 120h |
| 25 | 3.11 | 部署脚本 | 6d? | 2020-08-24 | 2020-08-31 | 24 | 22d |  |  | Developer; Testers | 96h |

| ID | WBS | Task | Duration | Start | Finish | Predecessors | Total slack | Free slack | Constraint | Resources | Work |
| --- | --- | --- | --- | --- | --- | --- | --- | --- | --- | --- | --- |
| 26 | 4 | **系统测试** | 90d? | 2020-05-18 | 2020-09-18 |  | 8d |  |  |  | 896h |
| 27 | 4.1 | 用例编写 | 10d | 2020-05-18 | 2020-05-29 |  | 88d |  | finish no earlier than 2020-05-29 | Testers | 80h |
| 28 | 4.2 | 算法测试 | 22d | 2020-06-01 | 2020-06-30 |  | 66d |  | finish no earlier than 2020-06-30 | Testers | 176h |
| 29 | 4.3 | 硬件测试 | 45d? | 2020-06-01 | 2020-07-31 |  | 43d |  | finish no earlier than 2020-07-31 | Testers | 360h |
| 30 | 4.4 | 集成测试 | 21d? | 2020-08-03 | 2020-08-31 |  | 22d |  | finish no earlier than 2020-08-31 | Testers | 168h |
| 31 | 4.5 | 回归测试 | 14d? | 2020-09-01 | 2020-09-18 |  | 8d |  | finish no earlier than 2020-09-18 | Testers | 112h |
| 32 | 5 | **文档编写** | 19d | 2020-09-01 | 2020-09-25 |  |  |  |  |  | 384h |
| 33 | 5.1 | 完善系统设计文档 | 4d | 2020-09-01 | 2020-09-04 | 13 | 3d | 0d | start no earlier than 2020-09-01 | Developer; Management | 64h |
| 34 | 5.2 | 完善测试用例文档 | 1w | 2020-09-07 | 2020-09-11 | 33, 18FS-5% | 3d | 0d | start no earlier than 2020-09-07 | Management; Testers | 80h |
| 35 | 5.3 | 完善部署手册文档 | 5d | 2020-09-14 | 2020-09-18 | 34 | 3d | 0d | finish no earlier than 2020-09-18 | Management; Project Manager; Testers | 120h |
| 36 | 5.4 | 编写系统使用手册文档 | 5d | 2020-09-21 | 2020-09-25 | 35 | 3d |  | start no earlier than 2020-09-21 | Developer; Management; Testers | 120h |
| 37 | 6 | **系统发布** | 3d | 2020-09-28 | 2020-09-30 |  |  |  |  |  | 8h |
| 38 | 6.1 | 系统发布上线 | 0.33d | 2020-09-28 | 2020-09-28 |  | 2.67d |  |  | Deployment Team; Project Manager; Testers | 8h |
